# Chip Design

Schedule from MS Project, 2015-05-14 to 2016-05-06, scheduled back from the finish, A marks actual dates.

## Calendars

- Standard: Mon-Fri 08:00-12:00, 13:00-17:00; Sat-Sun off.

## Resources

| Resource |
| --- |
| Zach Nelson |
| Kevin Cao |
| Dhruvit Naik |
| Whitley Forman |
| Julie Swift |
| Dr |

## Schedule

| ID | WBS | Task | Type | Duration | Start | Finish | Predecessors | Complete | Remaining | Constraint | Resources | Work | Actual work |
| --- | --- | --- | --- | --- | --- | --- | --- | --- | --- | --- | --- | --- | --- |
| 1 | 1 | **System Design** |  | 88d | 2015-05-14 A | 2015-09-14 |  | 55% | 40.01d | as late as possible | Dhruvit Naik; Julie Swift; Kevin Cao; Whitley Forman; Zach Nelson | 9288h | 5776.77h |
| 2 | 1.1 | General Planning | manual | 26d | 2015-05-14 A | 2015-06-18 A |  | 100% |  |  | Dhruvit Naik; Julie Swift; Kevin Cao; Whitley Forman; Zach Nelson | 1040h | 1040h |
| 3 | 1.2 | Complete I2S In Document | manual | 60d | 2015-06-18 A | 2015-09-09 A |  | 100% |  |  | Zach Nelson | 480h | 480h |
| 4 | 1.3 | Complete I2S Out Document | manual | 44d | 2015-07-11 A | 2015-09-09 |  | 40% | 26.4d |  | Kevin Cao | 352h | 140.8h |
| 5 | 1.4 | Complete Filter Document | manual | 60d | 2015-06-18 A | 2015-09-09 |  | 40% | 36d |  | Dhruvit Naik | 480h | 192h |
| 6 | 1.5 | Complete I2C Document | manual | 60d | 2015-06-18 A | 2015-09-09 |  | 50% | 30d |  | Whitley Forman | 480h | 240h |
| 7 | 1.6 | Complete Register Document | manual | 60d | 2015-06-18 A | 2015-09-09 |  | 10% | 54d |  | Julie Swift | 480h | 48h |
| 8 | 1.7 | Finish System Design | milestone, manual | 0d | 2015-09-09 A | 2015-09-09 |  | 70% | 0d |  | Dhruvit Naik; Julie Swift; Kevin Cao; Whitley Forman; Zach Nelson |  |  |
| 9 | 1.8 | Document System in CORE | manual | 60d | 2015-06-18 A | 2015-09-09 |  | 70% | 18d |  | Dhruvit Naik; Julie Swift; Kevin Cao; Whitley Forman; Zach Nelson | 2400h | 1680h |
| 10 | 1.9 | RTS/RTR and XFC Protocols | manual | 7d | 2015-09-08 | 2015-09-16 |  |  |  | as late as possible | Zach Nelson | 56h |  |
| 11 | 2 | Create a Detailed Schedule | manual | 9d | 2015-09-02 A | 2015-09-14 |  | 67% | 3d |  | Zach Nelson | 72h | 48h |
| 12 | 3 | Install Microsoft Project | manual | 9d | 2015-09-02 A | 2015-09-14 |  | 25% | 6.75d | as late as possible | Zach Nelson | 72h | 18h |
| 13 | 4 | **Install EDA Tools** |  | 11d | 2015-09-02 | 2015-09-16 |  |  |  | as late as possible | Dhruvit Naik; Julie Swift | 384h |  |
| 14 | 4.1 | Determine EDA Requriments | manual | 4d | 2015-09-02 | 2015-09-06 |  |  |  |  | Dhruvit Naik; Julie Swift | 64h |  |
| 15 | 4.2 | Install OS | manual | 3d | 2015-09-07 | 2015-09-09 | 14 |  |  |  | Dhruvit Naik; Julie Swift | 48h |  |
| 16 | 4.3 | Install EDA Tool | manual | 2d | 2015-09-10 | 2015-09-11 | 15 |  |  |  | Dhruvit Naik; Julie Swift | 32h |  |
| 17 | 4.4 | Create a Simple Test Case | manual | 2d | 2015-09-12 | 2015-09-14 | 16 |  |  |  | Dhruvit Naik; Julie Swift | 32h |  |
| 18 | 4.5 | Place and Route Test | manual | 2d | 2015-09-15 | 2015-09-16 | 17 |  |  |  | Dhruvit Naik; Julie Swift | 32h |  |
| 19 | 4.6 | Finish EDA Installation | milestone, manual | 0d | 2015-09-16 | 2015-09-16 |  |  |  |  | Dhruvit Naik; Julie Swift |  |  |
| 20 | 5 | Create Web Page | manual | 8d | 2015-09-23 | 2015-10-02 |  |  |  | as late as possible | Kevin Cao | 64h |  |
| 21 | 6 | **RTL Design** |  | 38d | 2015-09-10 A | 2015-10-31 | 1 | 2% | 37.32d | as late as possible | Dhruvit Naik; Julie Swift; Kevin Cao; Whitley Forman; Zach Nelson | 5944h | 149.73h |
| 22 | 6.1 | **Create i2si.v** |  | 38d | 2015-09-10 A | 2015-10-31 |  | 10% | 34.04d | as late as possible | Kevin Cao; Zach Nelson | 1072h | 102.59h |
| 23 | 6.1.1 | Create i2si_fifo.v | manual | 7d | 2015-09-10 A | 2015-09-18 |  | 70% | 2.1d |  | Zach Nelson | 56h | 39.2h |
| 24 | 6.1.2 | Create i2si_deserializer.v | manual | 11d | 2015-09-16 | 2015-09-30 |  |  |  |  | Kevin Cao; Zach Nelson | 176h |  |
| 25 | 6.1.3 | Create i2si_bist.v | manual | 16d | 2015-09-23 | 2015-10-14 |  |  |  |  | Kevin Cao | 128h |  |
| 26 | 6.1.4 | Create i2si.v Top-Level | manual | 13d | 2015-10-15 | 2015-10-31 | 23, 24, 25 |  |  | as late as possible | Kevin Cao | 104h |  |

| ID | WBS | Task | Type | Duration | Start | Finish | Predecessors | Total slack | Constraint | Resources | Work |
| --- | --- | --- | --- | --- | --- | --- | --- | --- | --- | --- | --- |
| 27 | 6.2 | **Create i2so.v** |  | 33d | 2015-09-10 | 2015-10-24 |  |  | as late as possible | Kevin Cao; Zach Nelson | 968h |
| 28 | 6.2.1 | Create i2so_fifo.v | manual | 10d | 2015-09-10 | 2015-09-23 |  |  |  | Zach Nelson | 80h |
| 29 | 6.2.2 | Create i2so_serializer.v | manual | 16d | 2015-09-16 | 2015-10-07 |  |  | finish no later than 2015-10-07 | Kevin Cao; Zach Nelson | 256h |
| 30 | 6.2.3 | Create i2so.v Top-Level | manual | 13d | 2015-10-08 | 2015-10-24 | 28, 29 |  | as late as possible | Kevin Cao | 104h |
| 31 | 6.3 | **Create filter.v** |  | 37d | 2015-09-10 | 2015-10-31 |  | 0d | as late as possible | Dhruvit Naik | 744h |
| 32 | 6.3.1 | Creater filter_convolution.v | manual | 10d | 2015-09-10 | 2015-09-23 |  |  | as late as possible | Dhruvit Naik | 80h |
| 33 | 6.3.2 | Create filter_accumulator.v | manual | 11d | 2015-09-16 | 2015-09-30 |  |  | as late as possible | Dhruvit Naik | 88h |
| 34 | 6.3.3 | Create filter_fifo.v | manual | 11d | 2015-09-23 | 2015-10-07 |  |  | as late as possible | Dhruvit Naik | 88h |
| 35 | 6.3.4 | Creater filter_round_shift_clip.v | manual | 11d | 2015-09-30 | 2015-10-14 |  |  | as late as possible | Dhruvit Naik | 88h |
| 36 | 6.3.5 | Create filter.v Top-Level | manual | 13d | 2015-10-15 | 2015-10-31 | 32, 33, 34, 35 |  | as late as possible | Dhruvit Naik | 104h |
| 37 | 6.4 | **Create register.v** |  | 37d | 2015-09-10 | 2015-10-30 |  |  | as late as possible | Julie Swift | 592h |
| 38 | 6.4.1 | Create register_trig_gen.v | manual | 15d | 2015-09-10 | 2015-09-30 |  |  | as late as possible | Julie Swift | 120h |
| 39 | 6.4.2 | Create register.v Top-Level | manual | 22d | 2015-10-01 | 2015-10-30 | 38 |  | as late as possible | Julie Swift | 176h |
| 40 | 6.5 | **Create i2c_slave.v** |  | 37d | 2015-09-10 | 2015-10-30 |  |  | as late as possible | Whitley Forman | 784h |
| 41 | 6.5.1 | Create i2c_slave_deserializer.v | manual | 10d | 2015-09-10 | 2015-09-23 |  |  | as late as possible | Whitley Forman | 80h |
| 42 | 6.5.2 | Create i2c_slave_serializer.v | manual | 11d | 2015-09-16 | 2015-09-30 |  |  | as late as possible | Whitley Forman | 88h |
| 43 | 6.5.3 | Create i2c_slave.v Buffer | manual | 11d | 2015-09-23 | 2015-10-07 |  |  | as late as possible | Whitley Forman | 88h |
| 44 | 6.5.4 | Create i2c_slave.v Write to Register | manual | 11d | 2015-09-30 | 2015-10-14 |  |  | as late as possible | Whitley Forman | 88h |
| 45 | 6.5.5 | Create i2c_slave.v Read from Register | manual | 11d | 2015-10-07 | 2015-10-21 |  |  | as late as possible | Whitley Forman | 88h |
| 46 | 6.5.6 | Create i2c_slave.v Top-Level | manual | 7d | 2015-10-22 | 2015-10-30 | 41, 42, 43, 44, 45 |  | as late as possible | Whitley Forman | 56h |
| 47 | 6.6 | Create chip.v | manual | 33d | 2015-09-16 | 2015-10-30 |  |  |  | Zach Nelson | 264h |
| 48 | 6.7 | Finish RTL Design | milestone, manual | 0d | 2015-10-31 | 2015-10-31 |  |  |  | Dhruvit Naik; Julie Swift; Kevin Cao; Whitley Forman; Zach Nelson |  |
| 49 | 7 | Create Text Fixtures | manual | 23d | 2015-09-30 | 2015-10-30 |  |  | as late as possible |  |  |
| 50 | 8 | Logic Synthesis | manual | 8d | 2015-11-01 | 2015-11-10 | 21 |  | finish no later than 2015-11-10 |  |  |
| 51 | 9 | Floor Planning | manual | 6d | 2015-11-11 | 2015-11-18 | 50 |  | as late as possible |  |  |
| 52 | 10 | Place and Route Gates | manual | 5d | 2015-11-19 | 2015-11-25 | 51 |  | finish no later than 2015-11-25 |  |  |

| ID | WBS | Task | Type | Duration | Start | Finish | Predecessors | Constraint | Resources | Work |
| --- | --- | --- | --- | --- | --- | --- | --- | --- | --- | --- |
| 53 | 11 | **Board Design** |  | 26d | 2015-10-21 | 2015-11-25 |  | as late as possible |  |  |
| 54 | 11.1 | Research FPGA's | manual | 5d | 2015-10-21 | 2015-10-27 |  | as late as possible |  |  |
| 55 | 11.2 | Purchase FPGA | manual | 2d | 2015-10-28 | 2015-10-29 | 54 |  |  |  |
| 56 | 11.3 | Write Microcontroller Code | manual | 16d | 2015-10-28 | 2015-11-18 |  | as late as possible |  |  |
| 57 | 11.4 | Link Board and FPGA | manual | 6d | 2015-11-18 | 2015-11-25 |  | as late as possible |  |  |
| 58 | 12 | Have a Functional FPGA | milestone, manual | 0d | 2015-12-02 | 2015-12-02 |  |  |  |  |
| 59 | 13 | Write Final Report and Presentation | manual | 5d | 2015-11-26 | 2015-12-02 |  | as late as possible | Dhruvit Naik; Julie Swift; Kevin Cao; Whitley Forman; Zach Nelson | 200h |
| 60 | 14 | Verification | manual | 1d | 2016-05-06 | 2016-05-06 |  | finish no earlier than 2015-05-14 |  |  |
| 61 | 15 | MOSIS Fabrication Deadline | milestone, manual | 0d | 2016-03-06 | 2016-03-06 |  | as late as possible | Dhruvit Naik; Julie Swift; Kevin Cao; Whitley Forman; Zach Nelson |  |
